How a schedule from an exported table changed from version to version. A marks actual dates.

## Version 1 (saved 2026-10-25)

Note of the change: Add a Projects section: sample project plans with computed critical paths

| ID | Task | Start | Finish |
| --- | --- | --- | --- |
| D01 | Approve Phase 0 and name the sponsor and steward | 0 | 0 |
| P0.1 | Charter accepted; owners named in the decision matrix | 0 | 3 |
| P0.2 | Platform host built, repository seeded, host connected through Arc | 3 | 10 |
| P0.3 | Least-privilege service principals for Entra ID, Intune and Arc | 3 | 6 |
| P0.4 | Read-only assessment run and committed | 10 | 20 |
| P0.5 | Transactions profiled for applications proposed to move from their data | 3 | 11 |
| G0 | G0 — Ready to Plan | 20 | 20 |
| D02 | Authoritative source for each attribute that drives access | 20 | 20 |
| P1.1 | Attribute taxonomy finalized (M-014) | 20 | 25 |
| P1.2 | Dynamic group design tested; enterprise groups and administrative units built (M-015) | 25 | 33 |
| P1.3 | Intune policy design complete; pilot profiles staged (M-016) | 33 | 38 |
| X-IDL | HR-to-cloud provisioning live for the foundation scope | 38 | 38 |
| P1.5 | Conditional Access design running in report-only (M-017) | 20 | 30 |
| D03 | Enforce the Conditional Access baseline | 30 | 30 |
| P1.6 | Baseline enforced; emergency access accounts vaulted and tested | 30 | 33 |
| P1.7 | Sync and DNS Private Resolver designs; resolver deployed (M-018, M-019) | 20 | 30 |
| D04 | Root of trust for device certificates | 20 | 20 |
| P1.8 | Cloud PKI design; issuing CA created (M-020) | 25 | 33 |
| P1.9 | IPAM covers the platform host and Tier 0 | 20 | 30 |
| P1.10 | Single sign-on; FIDO2 and passkeys open to Tier 0 administrators | 20 | 28 |
| P1.11 | Every High assessment finding remediated and re-scanned | 20 | 35 |
| D05 | Choose the pilot division | 20 | 20 |
| P1.12 | Design review approved (M-021) | 38 | 40 |
| G1 | G1 — Foundation Complete | 40 | 40 |
| D06 | Device pattern for each pilot cohort | 40 | 40 |
| P2.1 | Sync deployed; pilot attributes, groups, AUs and delegated roles live (M-022) | 40 | 50 |
| P2.2 | Pilot Conditional Access and Intune policies assigned (M-024, M-025) | 50 | 55 |
| P2.3 | Pilot devices moved by pattern (M-023) | 55 | 63 |
| P2.4 | First migrated GPOs unlinked from the pilot OUs | 63 | 68 |
| P2.5 | PIM for every pilot administrator (M-026) | 50 | 55 |
| P2.6 | Division DNS migrated, DHCP re-homed, hybrid resolution validated (M-027) | 40 | 55 |
| P2.7 | Cloud PKI certificates issued; Wi-Fi and VPN verified (M-028) | 63 | 70 |
| P2.8 | Certificate-based authentication for PIV and CAC holders (M-029) | 50 | 58 |
| P2.9 | Pilot servers under Arc with machine configuration (M-030) | 40 | 50 |
| P2.10 | Rollback rehearsed surface by surface | 63 | 66 |
| P2.11 | Drift-clean hold (14 days, illustrative); success criteria met (M-031) | 70 | 80 |
| P2.12 | Retrospective and runbook updates committed | 75 | 80 |
| G2 | G2 — Pilot Clean | 80 | 80 |
| D07 | Wave plan: which divisions, in which order | 80 | 80 |
| P3.1 | Wave 1, first region, about 25% (M-032) | 80 | 102 |
| P3.2 | Wave 2, about 50% cumulative (M-033) | 102 | 124 |
| P3.3 | Wave 3, about 75% cumulative (M-034) | 124 | 146 |
| P3.4 | Wave 4, everything remaining or excepted (M-035) | 146 | 168 |
| P3.5 | GPO links off migrated OUs after 7 clean days (M-036) | 163 | 168 |
| P3.6 | Attribute coverage at 100%; exception register reconciled (M-037) | 168 | 180 |
| P3.7 | Every server Arc-connected or excepted | 80 | 140 |
| G3 | G3 — Rollout Complete | 180 | 180 |
| D08 | End dates for legacy authentication and NTLM | 80 | 80 |
| P4.1 | Migrated GPOs retired | 180 | 185 |
| P4.2 | OU-based security groups retired | 185 | 190 |
| P4.3 | AD-integrated DNS zones moved, except the domain's own zones | 180 | 195 |
| P4.4 | AD-authorized DHCP retired | 195 | 200 |
| P4.5 | User and device issuance off AD CS; smart-card logon GPO retired | 180 | 195 |
| P4.6 | AD-bound service principal names migrated, retired or islanded, app by app | 180 | 210 |
| P4.7 | AD authentication volume measured below the agreed threshold | 210 | 220 |
| G4 | G4 — Legacy Quiet | 220 | 220 |
| D09 | Retain a Kerberos island, or retire AD completely | 180 | 180 |
| D10 | Retention of AD-era logs and records | 180 | 180 |
| P5.1 | AD changes frozen; final assessment and evidence packet | 220 | 225 |
| P5.2 | Domain controllers without operations master roles demoted | 225 | 230 |
| P5.3 | Remaining domain controllers demoted or islanded; domain zones moved or retired | 230 | 235 |
| P5.4 | VMs decommissioned; final state archived; retirement record committed | 235 | 240 |
| G5 | G5 — AD Retired | 240 | 240 |

## Version 2 (saved 2026-10-25)

Note of the change: Stop new AD dependencies from G0, and set a provisional target end state (#159)

Added:

| ID | Task | Start | Finish |
| --- | --- | --- | --- |
| P0.6 | Change process asks whether each change adds an AD dependency; exceptions to the AO | 3 | 6 |
| D11 | Provisional target end state: AD retired, or a dated Kerberos island | 20 | 20 |

Changed:

| ID | Task | Other |
| --- | --- | --- |
| D09 | Confirm or revise the target end state set at G0 (D11) | was named Retain a Kerberos island, or retire AD completely |

## Version 3 (saved 2026-11-07)

Note of the change: Plans: decisions pass (pilot servers to Phase 1, privacy basis gate, schedule alignment, labels, register fixes) (#451)

Added:

| ID | Task | Start | Finish |
| --- | --- | --- | --- |
| P1.13 | Pilot servers connected through Arc with machine configuration applied (M-030) | 30 | 40 |

Removed: P2.9 Pilot servers under Arc with machine configuration (M-030)

Changed:

| ID | Task | Start | Finish | Other |
| --- | --- | --- | --- | --- |
| X-IDL | HR-to-cloud provisioning live for the foundation scope | 38 → 40 | 38 → 40 |  |
| P2.4 | First migrated GPOs unlinked from the pilot OUs, after 20 days of testing beside the linked GPOs | 63 → 75 | 68 → 80 | was named First migrated GPOs unlinked from the pilot OUs |
| P4.1 | Migrated GPOs disabled and held as the rollback net (deletion follows the 90-day hold: Endpoint plan E5.2) |  |  | was named Migrated GPOs retired |
| P4.4 | DHCP scopes moved off the AD-authorized servers (de-authorizing them is the Network plan's D-N12) |  |  | was named AD-authorized DHCP retired |

## Version 4 (saved 2026-11-15)

Note of the change: Merge remote-tracking branch 'origin/main' into claude/no-azgov-cac-books

Changed:

| ID | Task | Other |
| --- | --- | --- |
| P2.8 | Certificate-based authentication for PIV holders (M-029) | was named Certificate-based authentication for PIV and CAC holders (M-029) |
