# Program Master Schedule: Phases 0 to 5 and Gates G0 to G5

How a schedule from MS Project XML changed from version to version. A marks actual dates.

## Version 1 (saved 2026-10-25)

Note of the change: Add a Projects section: sample project plans with computed critical paths (#150)

| ID | WBS | Task | Duration | Start | Finish | Predecessors | Constraint |
| --- | --- | --- | --- | --- | --- | --- | --- |
| 1 | 1 | **Phase 0 — Pre-flight** |  | 2027-01-04 | 2027-01-29 |  |  |
| 2 |  | D01 Approve Phase 0 and name the sponsor and steward | 0d | 2027-01-04 | 2027-01-04 |  |  |
| 3 |  | P0.1 Charter accepted; owners named in the decision matrix | 3d | 2027-01-04 | 2027-01-06 | 2 |  |
| 4 |  | P0.2 Platform host built, repository seeded, host connected through Arc | 7d | 2027-01-07 | 2027-01-15 | 3 |  |
| 5 |  | P0.3 Least-privilege service principals for Entra ID, Intune and Arc | 3d | 2027-01-07 | 2027-01-11 | 3 |  |
| 6 |  | P0.4 Read-only assessment run and committed | 10d | 2027-01-18 | 2027-01-29 | 4, 5 |  |
| 7 |  | P0.5 Transactions profiled for applications proposed to move from their data | 8d | 2027-01-07 | 2027-01-18 | 3 |  |
| 8 |  | G0 — Ready to Plan | 0d | 2027-01-29 | 2027-01-29 | 6, 7 |  |
| 9 | 2 | **Phase 1 — Foundation** |  | 2027-02-01 | 2027-02-26 |  |  |
| 10 |  | D02 Authoritative source for each attribute that drives access | 0d | 2027-01-29 | 2027-01-29 | 8 |  |
| 11 |  | P1.1 Attribute taxonomy finalized (M-014) | 5d | 2027-02-01 | 2027-02-05 | 10 |  |
| 12 |  | P1.2 Dynamic group design tested; enterprise groups and administrative units built (M-015) | 8d | 2027-02-08 | 2027-02-17 | 11 |  |
| 13 |  | P1.3 Intune policy design complete; pilot profiles staged (M-016) | 5d | 2027-02-18 | 2027-02-24 | 12 |  |
| 14 |  | X-IDL HR-to-cloud provisioning live for the foundation scope | 0d | 2027-02-24 | 2027-02-24 |  | start no earlier than 2027-02-24 |
| 15 |  | P1.5 Conditional Access design running in report-only (M-017) | 10d | 2027-02-01 | 2027-02-12 | 8 |  |
| 16 |  | D03 Enforce the Conditional Access baseline | 0d | 2027-02-12 | 2027-02-12 | 15 |  |
| 17 |  | P1.6 Baseline enforced; emergency access accounts vaulted and tested | 3d | 2027-02-15 | 2027-02-17 | 16 |  |
| 18 |  | P1.7 Sync and DNS Private Resolver designs; resolver deployed (M-018, M-019) | 10d | 2027-02-01 | 2027-02-12 | 8 |  |
| 19 |  | D04 Root of trust for device certificates | 0d | 2027-01-29 | 2027-01-29 | 8 |  |
| 20 |  | P1.8 Cloud PKI design; issuing CA created (M-020) | 8d | 2027-02-08 | 2027-02-17 | 19, 11 |  |
| 21 |  | P1.9 IPAM covers the platform host and Tier 0 | 10d | 2027-02-01 | 2027-02-12 | 8 |  |
| 22 |  | P1.10 Single sign-on; FIDO2 and passkeys open to Tier 0 administrators | 8d | 2027-02-01 | 2027-02-10 | 8 |  |
| 23 |  | P1.11 Every High assessment finding remediated and re-scanned | 15d | 2027-02-01 | 2027-02-19 | 8 |  |
| 24 |  | D05 Choose the pilot division | 0d | 2027-01-29 | 2027-01-29 | 8 |  |
| 25 |  | P1.12 Design review approved (M-021) | 2d | 2027-02-25 | 2027-02-26 | 13, 18, 20, 24 |  |
| 26 |  | G1 — Foundation Complete | 0d | 2027-02-26 | 2027-02-26 | 25, 14, 17, 21, 22, 23 |  |
| 27 | 3 | **Phase 2 — Pilot division** |  | 2027-03-01 | 2027-04-23 |  |  |
| 28 |  | D06 Device pattern for each pilot cohort | 0d | 2027-02-26 | 2027-02-26 | 26 |  |
| 29 |  | P2.1 Sync deployed; pilot attributes, groups, AUs and delegated roles live (M-022) | 10d | 2027-03-01 | 2027-03-12 | 26 |  |
| 30 |  | P2.2 Pilot Conditional Access and Intune policies assigned (M-024, M-025) | 5d | 2027-03-15 | 2027-03-19 | 29 |  |
| 31 |  | P2.3 Pilot devices moved by pattern (M-023) | 8d | 2027-03-22 | 2027-03-31 | 30, 28 |  |
| 32 |  | P2.4 First migrated GPOs unlinked from the pilot OUs | 5d | 2027-04-01 | 2027-04-07 | 31 |  |
| 33 |  | P2.5 PIM for every pilot administrator (M-026) | 5d | 2027-03-15 | 2027-03-19 | 29 |  |
| 34 |  | P2.6 Division DNS migrated, DHCP re-homed, hybrid resolution validated (M-027) | 15d | 2027-03-01 | 2027-03-19 | 26 |  |
| 35 |  | P2.7 Cloud PKI certificates issued; Wi-Fi and VPN verified (M-028) | 7d | 2027-04-01 | 2027-04-09 | 31 |  |
| 36 |  | P2.8 Certificate-based authentication for PIV and CAC holders (M-029) | 8d | 2027-03-15 | 2027-03-24 | 29 |  |
| 37 |  | P2.9 Pilot servers under Arc with machine configuration (M-030) | 10d | 2027-03-01 | 2027-03-12 | 26 |  |
| 38 |  | P2.10 Rollback rehearsed surface by surface | 3d | 2027-04-01 | 2027-04-05 | 31 |  |
| 39 |  | P2.11 Drift-clean hold (14 days, illustrative); success criteria met (M-031) | 10d | 2027-04-12 | 2027-04-23 | 32, 33, 34, 35, 36, 37, 38 |  |
| 40 |  | P2.12 Retrospective and runbook updates committed | 5d | 2027-04-19 | 2027-04-23 | 39SS+5d |  |
| 41 |  | G2 — Pilot Clean | 0d | 2027-04-23 | 2027-04-23 | 39, 40 |  |
| 42 | 4 | **Phase 3 — General rollout** |  | 2027-04-26 | 2027-09-10 |  |  |
| 43 |  | D07 Wave plan: which divisions, in which order | 0d | 2027-04-23 | 2027-04-23 | 41 |  |
| 44 |  | P3.1 Wave 1, first region, about 25% (M-032) | 22d | 2027-04-26 | 2027-05-25 | 43 |  |
| 45 |  | P3.2 Wave 2, about 50% cumulative (M-033) | 22d | 2027-05-26 | 2027-06-24 | 44 |  |
| 46 |  | P3.3 Wave 3, about 75% cumulative (M-034) | 22d | 2027-06-25 | 2027-07-26 | 45 |  |
| 47 |  | P3.4 Wave 4, everything remaining or excepted (M-035) | 22d | 2027-07-27 | 2027-08-25 | 46 |  |
| 48 |  | P3.5 GPO links off migrated OUs after 7 clean days (M-036) | 5d | 2027-08-19 | 2027-08-25 | 47SS+17d |  |
| 49 |  | P3.6 Attribute coverage at 100%; exception register reconciled (M-037) | 12d | 2027-08-26 | 2027-09-10 | 47 |  |
| 50 |  | P3.7 Every server Arc-connected or excepted | 60d | 2027-04-26 | 2027-07-16 | 41 |  |
| 51 |  | G3 — Rollout Complete | 0d | 2027-09-10 | 2027-09-10 | 48, 49, 50 |  |
| 52 | 5 | **Phase 4 — Legacy retirement** |  | 2027-04-26 | 2027-11-05 |  |  |
| 53 |  | D08 End dates for legacy authentication and NTLM | 0d | 2027-04-23 | 2027-04-23 | 41 |  |
| 54 |  | P4.1 Migrated GPOs retired | 5d | 2027-09-13 | 2027-09-17 | 51 |  |
| 55 |  | P4.2 OU-based security groups retired | 5d | 2027-09-20 | 2027-09-24 | 54 |  |
| 56 |  | P4.3 AD-integrated DNS zones moved, except the domain's own zones | 15d | 2027-09-13 | 2027-10-01 | 51 |  |
| 57 |  | P4.4 AD-authorized DHCP retired | 5d | 2027-10-04 | 2027-10-08 | 56 |  |
| 58 |  | P4.5 User and device issuance off AD CS; smart-card logon GPO retired | 15d | 2027-09-13 | 2027-10-01 | 51 |  |
| 59 |  | P4.6 AD-bound service principal names migrated, retired or islanded, app by app | 30d | 2027-09-13 | 2027-10-22 | 51, 53 |  |
| 60 |  | P4.7 AD authentication volume measured below the agreed threshold | 10d | 2027-10-25 | 2027-11-05 | 59, 55, 57, 58 |  |
| 61 |  | G4 — Legacy Quiet | 0d | 2027-11-05 | 2027-11-05 | 60 |  |
| 62 | 6 | **Phase 5 — AD DS retirement** |  | 2027-09-13 | 2027-12-03 |  |  |
| 63 |  | D09 Retain a Kerberos island, or retire AD completely | 0d | 2027-09-10 | 2027-09-10 | 51 |  |
| 64 |  | D10 Retention of AD-era logs and records | 0d | 2027-09-10 | 2027-09-10 | 51 |  |
| 65 |  | P5.1 AD changes frozen; final assessment and evidence packet | 5d | 2027-11-08 | 2027-11-12 | 61 |  |
| 66 |  | P5.2 Domain controllers without operations master roles demoted | 5d | 2027-11-15 | 2027-11-19 | 65, 63 |  |
| 67 |  | P5.3 Remaining domain controllers demoted or islanded; domain zones moved or retired | 5d | 2027-11-22 | 2027-11-26 | 66 |  |
| 68 |  | P5.4 VMs decommissioned; final state archived; retirement record committed | 5d | 2027-11-29 | 2027-12-03 | 67, 64 |  |
| 69 |  | G5 — AD Retired | 0d | 2027-12-03 | 2027-12-03 | 68 |  |

## Version 2 (saved 2026-10-25)

Note of the change: Stop new AD dependencies from G0, and set a provisional target end state

Last finish stays 2027-12-03.

Added:

| ID | Task | Duration | Start | Finish | Predecessors |
| --- | --- | --- | --- | --- | --- |
| 8 | P0.6 Change process asks whether each change adds an AD dependency; exceptions to the AO | 3d | 2027-01-07 | 2027-01-11 | 3 |
| 9 | D11 Provisional target end state: AD retired, or a dated Kerberos island | 0d | 2027-01-29 | 2027-01-29 | 6 |
| 65 | D09 Confirm or revise the target end state set at G0 (D11) | 0d | 2027-09-10 | 2027-09-10 | 53, 9 |

Removed: 63 D09 Retain a Kerberos island, or retire AD completely

Changed:

| ID | Task | Predecessors |
| --- | --- | --- |
| 10 | G0 — Ready to Plan | 6, 7 → 6, 7, 8, 9 |
| 68 | P5.2 Domain controllers without operations master roles demoted | 67, D09 Retain a Kerberos island, or retire AD completely → 67, 65 |

## Version 3 (saved 2026-11-07)

Note of the change: Plans: decisions pass (pilot servers to Phase 1, privacy basis gate, schedule alignment, labels, register fixes) (#451)

Last finish stays 2027-12-03.

Added:

| ID | Task | Duration | Start | Finish | Predecessors |
| --- | --- | --- | --- | --- | --- |
| 28 | P1.13 Pilot servers connected through Arc with machine configuration applied (M-030) | 10d | 2027-02-15 | 2027-02-26 | 10FS+10d |
| 35 | P2.4 First migrated GPOs unlinked from the pilot OUs, after 20 days of testing beside the linked GPOs | 5d | 2027-04-19 | 2027-04-23 | 33FS+20d |

Removed: 34 P2.4 First migrated GPOs unlinked from the pilot OUs; 39 P2.9 Pilot servers under Arc with machine configuration (M-030)

Changed:

| ID | Task | Start | Finish | Predecessors | Other |
| --- | --- | --- | --- | --- | --- |
| 16 | X-IDL HR-to-cloud provisioning live for the foundation scope | 2027-02-24 → 2027-02-26 (+2d) | 2027-02-24 → 2027-02-26 (+2d) |  | constraint start no earlier than 2027-02-24 → start no earlier than 2027-02-26 |
| 29 | G1 — Foundation Complete |  |  | 27, 16, 19, 23, 24, 25 → 27, 16, 19, 23, 24, 25, 28 |  |
| 41 | P2.11 Drift-clean hold (14 days, illustrative); success criteria met (M-031) |  |  | P2.4 First migrated GPOs unlinked from the pilot OUs, 36, 37, 38, 39, P2.9 Pilot servers under Arc with machine configuration (M-030), 40 → 36, 37, 38, 39, 40 |  |
| 43 | G2 — Pilot Clean |  |  | 41, 42 → 41, 42, 35 |  |
| 56 | P4.1 Migrated GPOs disabled and held as the rollback net (deletion follows the 90-day hold: Endpoint plan E5.2) |  |  |  | was named P4.1 Migrated GPOs retired |
| 59 | P4.4 DHCP scopes moved off the AD-authorized servers (de-authorizing them is the Network plan's D-N12) |  |  |  | was named P4.4 AD-authorized DHCP retired |

## Version 4 (saved 2026-11-15)

Note of the change: Commercial Azure and PIV only: remove Azure Government and CAC (rest) (#625)

Last finish stays 2027-12-03.

Changed:

| ID | Task | Other |
| --- | --- | --- |
| 39 | P2.8 Certificate-based authentication for PIV holders (M-029) | was named P2.8 Certificate-based authentication for PIV and CAC holders (M-029) |
